# IRIS-4 and Gen3 Backplane

Schedule from GanttProject, 2019-08-19 to 2021-02-15.
Matrox
IRIS-4 new smart camera: / - The new IRIS-4 camera assumes a redesign of the "CPU board" and the "Sensor board" / - The current IRIS-GTR "Daughter board" and "Flex PCB connectors board" would be used as is / PCIe Gen3 Backplane with support for 4-clusters, 11-slots for add-on cards: / - The layout of the backplane would start after completion of the IRIS4 CPU board layout. / Color Legend: / Gray: Feasability study task / Dark Blue: Boardlevel Hardware related tasks / Light Blue: CAD & Hardware tasks (layout) / Green: PCB fab and delivery services / Violet: Certification tasks

## Calendars

- Project calendar: Mon-Fri working; Sat-Sun off. Exceptions (off unless hours are given): 2019-12-24 to 2019-12-27, 2019-12-30 to 2020-01-02, 2020-12-24 to 2020-12-25, 2020-12-28 to 2021-01-01.

## Resources

| Resource |
| --- |
| Dmitri Golovanov |
| Pierre-Olivier Lessard |
| Jean-Luc Bisson |
| Sebastien Ricard |
| Christian Marcelin |
| Diego Zamora |
| Luc Cote |

## Schedule

| ID | WBS | Task | Type | Duration | Start | Finish | Predecessors | Resources |
| --- | --- | --- | --- | --- | --- | --- | --- | --- |
| 1 | 1 | **IRIS4 Smart Camera - Project 708** |  | 373d | 2019-08-19 | 2021-02-10 |  |  |
| 2 | 1.1 | Feasability study - General |  | 60d | 2019-08-19 | 2019-11-08 |  |  |
| 3 | 1.2 | Feasability study - CPU board & FPGA implementation |  | 90d | 2019-08-19 | 2019-12-20 |  |  |
| 4 | 1.3 | **CPU board** |  | 302d | 2019-09-30 | 2020-12-04 |  |  |
| 5 | 1.3.1 | Schematics entry - CPU board |  | 85d | 2019-09-30 | 2020-02-05 | 3FS-60d | Dmitri Golovanov |
| 6 | 1.3.2 | Layout - CPU board |  | 65d | 2019-12-23 | 2020-04-01 | 5FS-25d | Luc Cote |
| 7 | 1.3.3 | PCB Order & Reception - CPU board |  | 15d | 2020-04-02 | 2020-04-22 | 6 |  |
| 8 | 1.3.4 | Prototypes assembly - CPU board |  | 7d | 2020-04-23 | 2020-05-01 | 7 |  |
| 9 | 1.3.5 | Bring-Up - CPU board |  | 25d | 2020-05-04 | 2020-06-05 | 8 | Dmitri Golovanov |
| 10 | 1.3.6 | ECO - CPU board rev. 01 |  | 50d | 2020-07-06 | 2020-09-11 | 9FS+20d | Dmitri Golovanov [50%]; Luc Cote |
| 11 | 1.3.7 | Electrical Qualification - CPU board |  | 130d | 2020-06-08 | 2020-12-04 | 9 | Dmitri Golovanov [50%]; Christian Marcelin |
| 12 | 1.4 | **Sensor board** |  | 200d | 2019-11-11 | 2020-08-26 |  |  |
| 13 | 1.4.1 | Schematics entry - Sensor board |  | 50d | 2019-11-11 | 2020-01-29 | 2 | Sebastien Ricard |
| 14 | 1.4.2 | Layout - Sensor board |  | 45d | 2020-01-09 | 2020-03-11 | 13FS-15d | Diego Zamora |
| 15 | 1.4.3 | PCB Order & Reception - Sensor board |  | 10d | 2020-03-12 | 2020-03-25 | 14 |  |
| 16 | 1.4.4 | Prototype assembly - Sensor board |  | 5d | 2020-03-26 | 2020-04-01 | 15 |  |
| 17 | 1.4.5 | Bring-up - Sensor board |  | 15d | 2020-04-02 | 2020-04-22 | 16 | Diego Zamora |
| 18 | 1.4.6 | ECO - Sensor board rev. 01 |  | 45d | 2020-05-21 | 2020-07-22 | 17FS+20d | Sebastien Ricard [50%]; Diego Zamora [50%] |
| 19 | 1.4.7 | Electrical Qualification - Sensor board |  | 90d | 2020-04-23 | 2020-08-26 | 17 | Sebastien Ricard [50%]; Diego Zamora [50%] |
| 20 | 1.5 | EMC certification |  | 10d | 2020-09-14 | 2020-09-25 | 10, 18 |  |
| 21 | 1.6 | CRIQ testing |  | 1d | 2020-10-12 | 2020-10-12 | 20FS+10d |  |
| 22 | 1.7 | CSA electrical safety certification (optional) |  | 80d | 2020-10-13 | 2021-02-10 | 20FS+10d, 21 |  |
| 23 | 1.8 | **Milestones Engineering** |  | 322d | 2019-09-02 | 2020-12-04 |  |  |
| 24 | 1.8.1 | 1- System Requirements Specification | milestone | 0d | 2019-09-02 | 2019-09-02 | 35FS+10d |  |
| 25 | 1.8.2 | 2- Hardware Requirements Specification | milestone | 0d | 2019-12-23 | 2019-12-23 | 3 |  |
| 26 | 1.8.3 | 3- Hardware Design Description | milestone | 0d | 2020-02-06 | 2020-02-06 | 5 |  |
| 27 | 1.8.4 | PCB - Sensor board | milestone | 0d | 2020-03-26 | 2020-03-26 | 15 |  |
| 28 | 1.8.5 | Prototypes - Sensor board | milestone | 0d | 2020-04-02 | 2020-04-02 | 16 |  |
| 29 | 1.8.6 | Schematics & Gerbers - CPU board | milestone | 0d | 2020-04-02 | 2020-04-02 | 6 |  |
| 30 | 1.8.7 | PCB - CPU board | milestone | 0d | 2020-04-23 | 2020-04-23 | 7 |  |
| 31 | 1.8.8 | BOMs - All boards | milestone | 0d | 2020-04-23 | 2020-04-23 | 7, 15 |  |
| 32 | 1.8.9 | Prototypes - CPU board | milestone | 0d | 2020-05-04 | 2020-05-04 | 8 |  |
| 33 | 1.8.10 | Testing and validation | milestone | 0d | 2020-12-07 | 2020-12-07 | 11 |  |

Notes:
- 10: The ECO task includes schematic entry, layout, order & assembly, and bring-up. It is considered minor or non-trivial task and meant to address minor changes or corrections.
- 14: Layout of the sensor board to be made by the hardware team
- 18: The ECO task includes schematic entry, layout, order & assembly, and bring-up. It is considered minor or non-trivial task and meant to address minor changes or corrections.
- 32: Need preliminary BIOS image at this point

| ID | WBS | Task | Type | Duration | Start | Finish | Predecessors | Resources |
| --- | --- | --- | --- | --- | --- | --- | --- | --- |
| 34 | 1.9 | **Milestones Sales & Marketing** |  | 373d | 2019-08-19 | 2021-02-10 |  |  |
| 35 | 1.9.1 | Marketing Requirements Document | milestone | 0d | 2019-08-19 | 2019-08-19 | 3SF |  |
| 36 | 1.9.2 | BOM estimation | milestone | 0d | 2019-09-09 | 2019-09-09 | 35FS+15d |  |
| 37 | 1.9.3 | Engineering Samples Units | milestone | 0d | 2020-05-04 | 2020-05-04 | 8, 16 |  |
| 38 | 1.9.4 | Early Access Units | milestone | 0d | 2020-10-13 | 2020-10-13 | 20, 21 |  |
| 39 | 1.9.5 | Active Product Units | milestone | 0d | 2021-02-11 | 2021-02-11 | 20, 22 |  |
| 40 | 2 | **Supersight Gen3 Backplane - Project 709** |  | 365d | 2019-09-02 | 2021-02-12 |  |  |
| 41 | 2.1 | Schematics entry |  | 110d | 2019-09-02 | 2020-02-12 |  | Jean-Luc Bisson |
| 42 | 2.2 | Layout |  | 60d | 2020-04-02 | 2020-06-24 | 6, 41FS-20d | Luc Cote |
| 43 | 2.3 | PCB Order & Reception |  | 20d | 2020-06-25 | 2020-07-22 | 42 |  |
| 44 | 2.4 | Bring-Up |  | 20d | 2020-07-23 | 2020-08-19 | 43 | Jean-Luc Bisson |
| 45 | 2.5 | Electrical Qualification |  | 120d | 2020-08-20 | 2021-02-12 | 44 | Diego Zamora |
| 46 | 2.6 | ECO |  | 60d | 2020-09-17 | 2020-12-09 | 44FS+20d | Jean-Luc Bisson; Luc Cote |
| 47 | 2.7 | EMC certification |  | 10d | 2020-12-10 | 2020-12-23 | 46 |  |
| 48 | 2.8 | **Milestones Gen3 Backplane** |  | 140d | 2020-07-23 | 2021-02-12 |  |  |
| 49 | 2.8.1 | Engineering Samples Units | milestone | 0d | 2020-07-23 | 2020-07-23 | 43 |  |
| 50 | 2.8.2 | Early Access Units | milestone | 0d | 2021-01-04 | 2021-01-04 | 47 |  |
| 51 | 2.8.3 | Active Product Units | milestone | 0d | 2021-02-15 | 2021-02-15 | 45 |  |

Notes:
- 37: Obtaining a fully integrated IRIS4 camera will require that all PCBs and mechanical components and other components are being ready for integration.
- 38: Risks: / - The release date for the CPU board ECO / - Proper functioning of Sensor board and IO board
- 41: The schematics entry is executed in parallel with research and feasibility studies on implementation of the PCIe switch and the various controls surronding the backplane. / Completion of this task is dependent of the selected thermal solution for the PCIe switch.
- 42: The start date for this task is dependent of the selected thermal solution for the PCIe switch.
- 44: The completion of the bring-up will be dependant upon reception of the microcontroller firmware and the PCIe switch firmware & config. files.
- 46: The ECO task includes schematics entry, layout, order & assembly, and bring-up tasks. This ECO is meant to address minor to trivial corrections/modifications.
